Schedule from MS Project, 2022-10-06 to 2023-02-08, costs in R$.

## Calendars

- Padrão: Mon-Fri 09:00-12:00, 13:00-18:00; Sat-Sun off.

## Resources

| Resource | Group | Rate |
| --- | --- | --- |
| João | Analista de Sistemas | 22.1 |
| Everton | Gerente de Projetos | 29.5 |
| Eduardo | Desenvolvedor | 15.3 |
| Diego | Desenvolvedor | 15.3 |
| Ana Maria | Desenvolvedora | 15.3 |
| Joice | Desenvolvedora | 15.3 |
| Elaine | Testadora | 11.2 |

## Schedule

| ID | WBS | Task | Duration | Start | Finish | Predecessors | Baseline start | Baseline finish | Baseline duration | Total slack | Free slack | Resources | Work | Cost | Baseline cost |
| --- | --- | --- | --- | --- | --- | --- | --- | --- | --- | --- | --- | --- | --- | --- | --- |
| 1 | 1 | **UNIVERSIDADE** | 90d | 2022-10-06 | 2023-02-08 |  | 2022-10-06 | 2023-02-08 | 90d | 0d |  |  | 1200h | 21,268.8 | 21,268.8 |
| 2 | 1.1 | **Prospecção** | 8d | 2022-10-06 | 2022-10-17 |  | 2022-10-06 | 2022-10-17 | 8d | 0d |  |  | 64h | 1,769.6 | 1,769.6 |
| 3 | 1.1.1 | Levantar o escopo | 2d | 2022-10-06 | 2022-10-07 |  | 2022-10-06 | 2022-10-07 | 2d | 0d |  | Everton | 16h | 472 | 472 |
| 4 | 1.1.2 | Criar estimativa inicial do projeto | 2d | 2022-10-10 | 2022-10-11 | 3 | 2022-10-10 | 2022-10-11 | 2d | 0d |  | Everton | 16h | 472 | 472 |
| 5 | 1.1.3 | Gerar orçamento preliminar | 2d | 2022-10-12 | 2022-10-13 | 4 | 2022-10-12 | 2022-10-13 | 2d | 0d |  | João | 16h | 353.6 | 353.6 |
| 6 | 1.1.4 | Obter assinatura de contrato | 2d | 2022-10-14 | 2022-10-17 | 5 | 2022-10-14 | 2022-10-17 | 2d | 0d |  | Everton | 16h | 472 | 472 |
| 7 | 1.2 | **Planejamento** | 15d | 2022-10-18 | 2022-11-07 | 2 | 2022-10-18 | 2022-11-07 | 15d | 0d |  |  | 192h | 4,222.4 | 4,222.4 |
| 8 | 1.2.1 | Plano para o projeto | 3d | 2022-10-18 | 2022-10-20 |  | 2022-10-18 | 2022-10-20 | 3d | 0d |  | Everton | 24h | 708 | 708 |
| 9 | 1.2.2 | Identificar os riscos | 3d | 2022-10-21 | 2022-10-25 | 8 | 2022-10-21 | 2022-10-25 | 3d | 3d | 0d | João | 24h | 530.4 | 530.4 |
| 10 | 1.2.3 | Preparar documento dos requisitos | 4d | 2022-10-26 | 2022-10-31 | 9 | 2022-10-26 | 2022-10-31 | 4d | 3d | 0d | João | 32h | 707.2 | 707.2 |
| 11 | 1.2.4 | Detalhar as estimativas | 2d | 2022-11-01 | 2022-11-02 | 10 | 2022-11-01 | 2022-11-02 | 2d | 3d |  | João | 16h | 353.6 | 353.6 |
| 12 | 1.2.5 | Criar o cronograma | 2d | 2022-10-21 | 2022-10-24 | 8 | 2022-10-21 | 2022-10-24 | 2d | 0d |  | Everton | 16h | 472 | 472 |
| 13 | 1.2.6 | Obter assinatura do cliente | 2d | 2022-10-25 | 2022-10-26 | 12 | 2022-10-25 | 2022-10-26 | 2d | 0d |  | Everton | 16h | 472 | 472 |
| 14 | 1.2.7 | Fazer os diagramas de UML | 8d | 2022-10-27 | 2022-11-07 | 13 | 2022-10-27 | 2022-11-07 | 8d | 0d |  | Eduardo | 64h | 979.2 | 979.2 |
| 15 | 1.3 | **Execução** | 50d | 2022-11-08 | 2023-01-16 | 7 | 2022-11-08 | 2023-01-16 | 50d | 0d |  |  | 792h | 12,125.6 | 12,125.6 |
| 16 | 1.3.1 | **Banco de dados** | 30d | 2022-11-08 | 2022-12-19 |  | 2022-11-08 | 2022-12-19 | 30d | 0d |  |  | 632h | 9,669.6 | 9,669.6 |
| 17 | 1.3.1.1 | Criar o script do banco de dados | 5d | 2022-11-08 | 2022-11-14 |  | 2022-11-08 | 2022-11-14 | 5d | 0d |  | Eduardo | 40h | 612 | 612 |
| 18 | 1.3.1.2 | **Cadastros** | 12d | 2022-11-15 | 2022-11-30 | 17 | 2022-11-15 | 2022-11-30 | 12d | 0d |  |  | 224h | 3,427.2 | 3,427.2 |
| 19 | 1.3.1.2.1 | 001 – Cria Cadastro de Alunos | 5d | 2022-11-15 | 2022-11-21 |  | 2022-11-15 | 2022-11-21 | 5d | 3d | 0d | Diego | 40h | 612 | 612 |
| 20 | 1.3.1.2.2 | 002 – Criar Cadastro de Cursos | 4d | 2022-11-15 | 2022-11-18 |  | 2022-11-15 | 2022-11-18 | 4d | 0d |  | Ana Maria | 32h | 489.6 | 489.6 |
| 21 | 1.3.1.2.3 | 003 – Criar Cadastro de Disciplinas | 4d | 2022-11-21 | 2022-11-24 | 20 | 2022-11-21 | 2022-11-24 | 4d | 0d |  | Eduardo | 32h | 489.6 | 489.6 |
| 22 | 1.3.1.2.4 | 004 – Criar Cadastro de Salas de Aulas | 3d | 2022-11-15 | 2022-11-17 |  | 2022-11-15 | 2022-11-17 | 3d | 9d |  | Joice | 24h | 367.2 | 367.2 |
| 23 | 1.3.1.2.5 | 005 – Criar Cadastro de Professores | 4d | 2022-11-25 | 2022-11-30 | 21 | 2022-11-25 | 2022-11-30 | 4d | 0d |  | Ana Maria | 32h | 489.6 | 489.6 |
| 24 | 1.3.1.2.6 | 006 – Criar Cadastro de Notas | 4d | 2022-11-25 | 2022-11-30 | 19, 21 | 2022-11-25 | 2022-11-30 | 4d | 0d |  | Joice | 32h | 489.6 | 489.6 |
| 25 | 1.3.1.2.7 | 007 – Criar Cadastro de Faltas | 4d | 2022-11-22 | 2022-11-25 | 19 | 2022-11-22 | 2022-11-25 | 4d | 3d |  | Diego | 32h | 489.6 | 489.6 |

| ID | WBS | Task | Duration | Start | Finish | Predecessors | Baseline start | Baseline finish | Baseline duration | Total slack | Free slack | Resources | Work | Cost | Baseline cost |
| --- | --- | --- | --- | --- | --- | --- | --- | --- | --- | --- | --- | --- | --- | --- | --- |
| 26 | 1.3.1.3 | **Relatórios** | 13d | 2022-12-01 | 2022-12-19 | 18 | 2022-12-01 | 2022-12-19 | 13d | 0d |  |  | 368h | 5,630.4 | 5,630.4 |
| 27 | 1.3.1.3.1 | 008 – Criar Relatório de Alunos | 4d | 2022-12-01 | 2022-12-06 |  | 2022-12-01 | 2022-12-06 | 4d | 0d |  | Eduardo | 32h | 489.6 | 489.6 |
| 28 | 1.3.1.3.2 | 009 – Criar Relatório de Cursos | 4d | 2022-12-01 | 2022-12-06 |  | 2022-12-01 | 2022-12-06 | 4d | 0d |  | Diego | 32h | 489.6 | 489.6 |
| 29 | 1.3.1.3.3 | 010 – Criar Relatório de Disciplinas | 4d | 2022-12-01 | 2022-12-06 |  | 2022-12-01 | 2022-12-06 | 4d | 0d |  | Ana Maria | 32h | 489.6 | 489.6 |
| 30 | 1.3.1.3.4 | 011 – Criar Relatório de Salas de Aulas | 4d | 2022-12-01 | 2022-12-06 |  | 2022-12-01 | 2022-12-06 | 4d | 9d |  | Joice | 32h | 489.6 | 489.6 |
| 31 | 1.3.1.3.5 | 012 - Criar Relatório de Professores | 4d | 2022-12-07 | 2022-12-12 | 28, 29 | 2022-12-07 | 2022-12-12 | 4d | 0d |  | Eduardo | 32h | 489.6 | 489.6 |
| 32 | 1.3.1.3.6 | 013 – Criar Relatório de Notas | 4d | 2022-12-07 | 2022-12-12 | 27, 28, 29 | 2022-12-07 | 2022-12-12 | 4d | 1d | 0d | Diego | 32h | 489.6 | 489.6 |
| 33 | 1.3.1.3.7 | 014 – Criar Relatório de Faltas | 4d | 2022-12-07 | 2022-12-12 | 27, 28, 29 | 2022-12-07 | 2022-12-12 | 4d | 1d | 0d | Ana Maria | 32h | 489.6 | 489.6 |
| 34 | 1.3.1.3.8 | 015 – Criar Relatório de Alunos Aprovados | 4d | 2022-12-13 | 2022-12-16 | 32, 33 | 2022-12-13 | 2022-12-16 | 4d | 1d |  | Eduardo | 32h | 489.6 | 489.6 |
| 35 | 1.3.1.3.9 | 016 – Criar Relatório de Professores por Curso | 5d | 2022-12-13 | 2022-12-19 | 31 | 2022-12-13 | 2022-12-19 | 5d | 0d |  | Diego | 40h | 612 | 612 |
| 36 | 1.3.1.3.10 | 017 – Criar Relatório de Alunos por Disciplina | 5d | 2022-12-07 | 2022-12-13 | 27, 29 | 2022-12-07 | 2022-12-13 | 5d | 0d |  | Joice | 40h | 612 | 612 |
| 37 | 1.3.1.3.11 | 018 – Criar Relatório de Alunos por Curso | 4d | 2022-12-14 | 2022-12-19 | 36 | 2022-12-14 | 2022-12-19 | 4d | 0d |  | Ana Maria | 32h | 489.6 | 489.6 |
| 38 | 1.3.2 | Testar a aplicação | 10d | 2022-12-20 | 2023-01-02 | 16 | 2022-12-20 | 2023-01-02 | 10d | 0d |  | Elaine | 80h | 896 | 896 |
| 39 | 1.3.3 | Gerar a instalação | 2d | 2023-01-03 | 2023-01-04 | 38 | 2023-01-03 | 2023-01-04 | 2d | 0d |  | Eduardo | 16h | 244.8 | 244.8 |
| 40 | 1.3.4 | Fazer o plano de implantação | 2d | 2023-01-05 | 2023-01-06 | 39 | 2023-01-05 | 2023-01-06 | 2d | 0d |  | João | 16h | 353.6 | 353.6 |
| 41 | 1.3.5 | Instalar o sistema | 4d | 2023-01-09 | 2023-01-12 | 40 | 2023-01-09 | 2023-01-12 | 4d | 0d |  | Eduardo | 32h | 489.6 | 489.6 |
| 42 | 1.3.6 | Obter a aceitação do cliente | 2d | 2023-01-13 | 2023-01-16 | 41 | 2023-01-13 | 2023-01-16 | 2d | 0d |  | Everton | 16h | 472 | 472 |
| 43 | 1.4 | **Monitoramento e Controle** | 15d | 2023-01-17 | 2023-02-06 | 15 | 2023-01-17 | 2023-02-06 | 15d | 0d |  |  | 120h | 2,325.6 | 2,325.6 |
| 44 | 1.4.1 | Acompanhar os riscos do projeto | 5d | 2023-01-17 | 2023-01-23 |  | 2023-01-17 | 2023-01-23 | 5d | 0d |  | João | 40h | 884 | 884 |
| 45 | 1.4.2 | Acompanhar os requisitos do projeto | 4d | 2023-01-24 | 2023-01-27 | 44 | 2023-01-24 | 2023-01-27 | 4d | 0d |  | João | 32h | 707.2 | 707.2 |
| 46 | 1.4.3 | Atualizar medidas | 3d | 2023-01-30 | 2023-02-01 | 45 | 2023-01-30 | 2023-02-01 | 3d | 0d |  | Eduardo | 24h | 367.2 | 367.2 |
| 47 | 1.4.4 | Executar ações corretivas | 3d | 2023-02-02 | 2023-02-06 | 46 | 2023-02-02 | 2023-02-06 | 3d | 0d |  | Eduardo | 24h | 367.2 | 367.2 |
| 48 | 1.5 | **Fechamento** | 2d | 2023-02-07 | 2023-02-08 | 43 | 2023-02-07 | 2023-02-08 | 2d | 0d |  |  | 32h | 825.6 | 825.6 |
| 49 | 1.5.1 | Documento de fechamento do projeto | 2d | 2023-02-07 | 2023-02-08 |  | 2023-02-07 | 2023-02-08 | 2d | 0d |  | João | 16h | 353.6 | 353.6 |
| 50 | 1.5.2 | Registramos lições aprendidas | 2d | 2023-02-07 | 2023-02-08 |  | 2023-02-07 | 2023-02-08 | 2d | 0d |  | Everton | 16h | 472 | 472 |
